# Conveyor Belt Project new

How a schedule from MS Project changed from version to version. A marks actual dates.

## Version 1 (saved 2016-10-22, file Group 14 Interim 3 leveling within slack.mpp)

Note of the change: MS files

| ID | WBS | Task | Duration | Start | Finish | Predecessors | Total float | Constraint |
| --- | --- | --- | --- | --- | --- | --- | --- | --- |
| 1 | 5 | **Converyor Belt Project** | 530d | 2010-01-04 | 2012-02-02 |  | 0d |  |
| 2 | 5.A | **Hardware** | 445d | 2010-02-08 | 2011-11-04 |  | 0d |  |
| 3 |  | Hardware Specifications | 50d | 2010-02-08 | 2010-04-16 | 26 | 0d |  |
| 4 |  | Hardware Design | 70d | 2010-04-19 | 2010-07-27 | 3 | 0d |  |
| 5 |  | Hardware Documentation | 30d | 2010-07-28 | 2010-09-08 | 4 | 0d |  |
| 6 |  | Prototypes | 80d | 2010-11-18 | 2011-03-15 | 29 | 50d |  |
| 7 |  | Order Circuit Boards | 5d | 2011-06-30 | 2011-07-07 | 31 | 0d |  |
| 8 |  | Assemble Preproduction Models | 30d | 2011-09-26 | 2011-11-04 | 7FS+50d | 0d |  |
| 9 | 5.B | **Opreating System** | 445d | 2010-02-08 | 2011-11-04 |  | 0d |  |
| 10 |  | Kernel Specifications | 20d | 2010-02-08 | 2010-03-05 | 26 | 0d |  |
| 11 |  | Kernel Specified | 0d | 2010-03-05 | 2010-03-05 | 10 | 0d |  |
| 12 | 5.B.b | **Drivers** | 280d | 2010-04-19 | 2011-05-24 |  | 0d |  |
| 13 |  | Disk Drivers | 100d | 2010-04-19 | 2010-09-08 | 10, 11 | 0d |  |
| 14 |  | Serial I/0 drivers | 130d | 2010-11-18 | 2011-05-24 | 29 | 0d |  |
| 15 |  | Memory Management | 90d | 2010-05-03 | 2010-09-08 | 10 | 0d |  |
| 16 |  | Opreating System Documentation | 25d | 2010-04-26 | 2010-05-28 | 10 | 70d |  |
| 17 |  | Network interface | 90d | 2011-06-30 | 2011-11-04 | 31 | 0d |  |
| 18 | 5.C | **Utilities** | 395d | 2010-03-08 | 2011-09-23 |  | 0d |  |
| 19 |  | Utilities Specification | 15d | 2010-03-08 | 2010-03-26 | 26, 27 | 0d |  |
| 20 |  | Utilities Secified | 0d | 2010-03-26 | 2010-03-26 | 19 | 0d |  |
| 21 |  | Routine Utilities | 60d | 2010-06-15 | 2010-09-08 | 19, 20 | 0d |  |
| 22 |  | Complex Utitlities | 80d | 2010-05-17 | 2010-09-08 | 19 | 0d |  |
| 23 |  | Utilities Documentation | 20d | 2010-03-29 | 2010-04-23 | 19 | 95d |  |
| 24 |  | Shell | 60d | 2011-06-30 | 2011-09-23 | 31 | 30d |  |
| 25 | 5.D | **System Integration** | 530d | 2010-01-04 | 2012-02-02 |  | 0d |  |
| 26 |  | Architectural Decisions | 25d | 2010-01-04 | 2010-02-05 |  | 0d |  |
| 27 |  | Decided on Architectures | 0d | 2010-02-05 | 2010-02-05 | 26 | 0d |  |
| 28 |  | Start of Integration | 0d | 2010-09-09 | 2010-09-09 | 13, 15, 16, 21, 22, 23, 5 | 0d | start no earlier than 2010-09-09 |
| 29 |  | Integration First phase | 50d | 2010-09-09 | 2010-11-17 | 13, 15, 16, 21, 22, 23, 5, 28 | 0d |  |
| 30 |  | Start of system testing | 0d | 2011-05-25 | 2011-05-25 | 6, 14 | 0d | start no earlier than 2011-05-25 |
| 31 |  | system hard/software test | 25d | 2011-05-25 | 2011-06-29 | 6, 14, 30 | 0d |  |
| 32 |  | Project documentation | 50d | 2011-08-26 | 2011-11-04 | 31 | 0d |  |
| 33 |  | Start of acceptance testing | 0d | 2011-11-07 | 2011-11-07 | 17, 24, 32, 8 | 0d | start no earlier than 2011-11-07 |
| 34 |  | Integration acceptance testing | 60d | 2011-11-07 | 2012-02-02 | 17, 24, 32, 8, 33 | 0d |  |
| 35 | 1.5 | **Contingency reserves** | 0d | 2012-02-02 | 2012-02-02 |  | 0d |  |
| 36 |  | Budget reserves | 0d | 2012-02-02 | 2012-02-02 | 34FF | 0d |  |
| 37 |  | Management Reserves | 0d | 2012-02-02 | 2012-02-02 | 34FF | 0d |  |

## Version 2 (saved 2016-10-22, file Group 14 Interim 3 leveling outside of slack.mpp)

Note of the change: MS files

Last finish 2012-02-02 → 2012-08-27 (+207d).

Changed:

| ID | Task | Start | Finish | Duration | Total float |
| --- | --- | --- | --- | --- | --- |
| 1 | **Converyor Belt Project** |  | 2012-02-02 → 2012-08-27 (+207d) | 530d → 675d |  |
| 2 | **Hardware** |  | 2011-11-04 → 2012-06-01 (+210d) | 445d → 590d |  |
| 6 | Prototypes | 2010-11-18 → 2011-05-04 (+167d) | 2011-03-15 → 2011-08-25 (+163d) |  |  |
| 7 | Order Circuit Boards | 2011-06-30 → 2011-12-13 (+166d) | 2011-07-07 → 2011-12-19 (+165d) |  |  |
| 8 | Assemble Preproduction Models | 2011-09-26 → 2012-04-20 (+207d) | 2011-11-04 → 2012-06-01 (+210d) |  |  |
| 9 | **Opreating System** |  | 2011-11-04 → 2012-04-19 (+167d) | 445d → 560d |  |
| 12 | **Drivers** | 2010-04-19 → 2010-07-28 (+100d) | 2011-05-24 → 2011-11-04 (+164d) | 280d → 325d |  |
| 13 | Disk Drivers | 2010-04-19 → 2010-07-28 (+100d) | 2010-09-08 → 2010-12-16 (+99d) |  | 0d → 45d |
| 14 | Serial I/0 drivers | 2010-11-18 → 2011-05-04 (+167d) | 2011-05-24 → 2011-11-04 (+164d) |  |  |
| 15 | Memory Management | 2010-05-03 → 2010-10-14 (+164d) | 2010-09-08 → 2011-02-22 (+167d) |  |  |
| 17 | Network interface | 2011-06-30 → 2011-12-13 (+166d) | 2011-11-04 → 2012-04-19 (+167d) |  | 0d → 30d |
| 18 | **Utilities** |  | 2011-09-23 → 2012-03-08 (+167d) | 395d → 510d | 0d → 60d |
| 21 | Routine Utilities | 2010-06-15 → 2010-07-21 (+36d) | 2010-09-08 → 2010-10-13 (+35d) |  | 0d → 90d |
| 22 | Complex Utitlities | 2010-05-17 → 2010-03-29 (-49d) | 2010-09-08 → 2010-07-20 (-50d) |  | 0d → 150d |
| 24 | Shell | 2011-06-30 → 2011-12-13 (+166d) | 2011-09-23 → 2012-03-08 (+167d) |  | 30d → 60d |
| 25 | **System Integration** |  | 2012-02-02 → 2012-08-27 (+207d) | 530d → 675d |  |
| 28 | Start of Integration | 2010-09-09 → 2011-02-22 (+166d) | 2010-09-09 → 2011-02-22 (+166d) |  |  |
| 29 | Integration First phase | 2010-09-09 → 2011-02-23 (+167d) | 2010-11-17 → 2011-05-03 (+167d) |  |  |
| 30 | Start of system testing | 2011-05-25 → 2011-11-04 (+163d) | 2011-05-25 → 2011-11-04 (+163d) |  |  |
| 31 | system hard/software test | 2011-05-25 → 2011-11-07 (+166d) | 2011-06-29 → 2011-12-12 (+166d) |  |  |
| 32 | Project documentation | 2011-08-26 → 2012-03-09 (+196d) | 2011-11-04 → 2012-05-17 (+195d) |  | 0d → 10d |
| 33 | Start of acceptance testing | 2011-11-07 → 2012-06-01 (+207d) | 2011-11-07 → 2012-06-01 (+207d) |  |  |
| 34 | Integration acceptance testing | 2011-11-07 → 2012-06-04 (+210d) | 2012-02-02 → 2012-08-27 (+207d) |  |  |
| 35 | **Contingency reserves** | 2012-02-02 → 2012-08-27 (+207d) | 2012-02-02 → 2012-08-27 (+207d) |  |  |
| 36 | Budget reserves | 2012-02-02 → 2012-08-27 (+207d) | 2012-02-02 → 2012-08-27 (+207d) |  |  |
| 37 | Management Reserves | 2012-02-02 → 2012-08-27 (+207d) | 2012-02-02 → 2012-08-27 (+207d) |  |  |

## Version 3 (saved 2016-10-26, file Group 14 Interim 3 before levelling.mpp)

Note of the change: MS files

Last finish 2012-08-27 → 2012-02-02 (-207d).

Changed:

| ID | Task | Start | Finish | Duration | Total float |
| --- | --- | --- | --- | --- | --- |
| 1 | **Converyor Belt Project** |  | 2012-08-27 → 2012-02-02 (-207d) | 675d → 530d |  |
| 2 | **Hardware** |  | 2012-06-01 → 2011-10-28 (-217d) | 590d → 440d |  |
| 6 | Prototypes | 2011-05-04 → 2010-11-18 (-167d) | 2011-08-25 → 2011-03-15 (-163d) |  |  |
| 7 | Order Circuit Boards | 2011-12-13 → 2011-06-30 (-166d) | 2011-12-19 → 2011-07-07 (-165d) |  | 0d → 5d |
| 8 | Assemble Preproduction Models | 2012-04-20 → 2011-09-19 (-214d) | 2012-06-01 → 2011-10-28 (-217d) |  | 0d → 5d |
| 9 | **Opreating System** |  | 2012-04-19 → 2011-11-04 (-167d) | 560d → 445d |  |
| 12 | **Drivers** | 2010-07-28 → 2010-03-08 (-142d) | 2011-11-04 → 2011-05-24 (-164d) | 325d → 310d |  |
| 13 | Disk Drivers | 2010-07-28 → 2010-03-08 (-142d) | 2010-12-16 → 2010-07-27 (-142d) |  | 45d → 30d |
| 14 | Serial I/0 drivers | 2011-05-04 → 2010-11-18 (-167d) | 2011-11-04 → 2011-05-24 (-164d) |  |  |
| 15 | Memory Management | 2010-10-14 → 2010-03-08 (-220d) | 2011-02-22 → 2010-07-13 (-224d) |  | 0d → 40d |
| 16 | Opreating System Documentation | 2010-04-26 → 2010-03-08 (-49d) | 2010-05-28 → 2010-04-09 (-49d) |  | 185d → 105d |
| 17 | Network interface | 2011-12-13 → 2011-06-30 (-166d) | 2012-04-19 → 2011-11-04 (-167d) |  | 30d → 0d |
| 18 | **Utilities** | 2010-03-08 → 2010-02-08 (-28d) | 2012-03-08 → 2011-09-23 (-167d) | 510d → 415d | 60d → 30d |
| 19 | Utilities Specification | 2010-03-08 → 2010-02-08 (-28d) | 2010-03-26 → 2010-02-26 (-28d) |  | 90d → 55d |
| 20 | Utilities Secified | 2010-03-26 → 2010-02-26 (-28d) | 2010-03-26 → 2010-02-26 (-28d) |  | 90d → 75d |
| 21 | Routine Utilities | 2010-07-21 → 2010-03-01 (-142d) | 2010-10-13 → 2010-05-21 (-145d) |  | 90d → 75d |
| 22 | Complex Utitlities | 2010-03-29 → 2010-03-01 (-28d) | 2010-07-20 → 2010-06-21 (-29d) |  | 150d → 55d |
| 23 | Utilities Documentation | 2010-03-29 → 2010-03-01 (-28d) | 2010-04-23 → 2010-03-26 (-28d) |  | 210d → 115d |
| 24 | Shell | 2011-12-13 → 2011-06-30 (-166d) | 2012-03-08 → 2011-09-23 (-167d) |  | 60d → 30d |
| 25 | **System Integration** |  | 2012-08-27 → 2012-02-02 (-207d) | 675d → 530d |  |
| 28 | Start of Integration | 2011-02-22 → 2010-09-09 (-166d) | 2011-02-22 → 2010-09-09 (-166d) |  |  |
| 29 | Integration First phase | 2011-02-23 → 2010-09-09 (-167d) | 2011-05-03 → 2010-11-17 (-167d) |  |  |
| 30 | Start of system testing | 2011-11-04 → 2011-05-25 (-163d) | 2011-11-04 → 2011-05-25 (-163d) |  |  |
| 31 | system hard/software test | 2011-11-07 → 2011-05-25 (-166d) | 2011-12-12 → 2011-06-29 (-166d) |  |  |
| 32 | Project documentation | 2012-03-09 → 2011-06-30 (-253d) | 2012-05-17 → 2011-09-09 (-251d) |  | 10d → 40d |
| 33 | Start of acceptance testing | 2012-06-01 → 2011-11-07 (-207d) | 2012-06-01 → 2011-11-07 (-207d) |  |  |
| 34 | Integration acceptance testing | 2012-06-04 → 2011-11-07 (-210d) | 2012-08-27 → 2012-02-02 (-207d) |  |  |
| 35 | **Contingency reserves** | 2012-08-27 → 2012-02-02 (-207d) | 2012-08-27 → 2012-02-02 (-207d) |  |  |
| 36 | Budget reserves | 2012-08-27 → 2012-02-02 (-207d) | 2012-08-27 → 2012-02-02 (-207d) |  |  |
| 37 | Management Reserves | 2012-08-27 → 2012-02-02 (-207d) | 2012-08-27 → 2012-02-02 (-207d) |  |  |

## Version 4 (data date 2011-01-01, saved 2016-12-15, file interim 5.mpp)

Note of the change: MS files

Last finish 2012-02-02 → 2012-02-23 (+21d). Complete tasks 0 → 13.

Changed:

| ID | Task | Start | Finish | Duration | Complete | Total float | Other |
| --- | --- | --- | --- | --- | --- | --- | --- |
| 1 | **Converyor Belt Project** | 2010-01-04 A | 2012-02-02 → 2012-02-23 (+21d) | 530d → 545d | 0% → 61% |  | baseline start none → 2010-01-04; baseline finish none → 2012-02-02 |
| 2 | **Hardware** | 2010-02-08 → 2010-02-09 A (+1d) | 2011-10-28 → 2011-11-28 (+31d) | 440d → 459d | 0% → 63% |  | baseline start none → 2010-02-08; baseline finish none → 2011-10-28 |
| 3 | Hardware Specifications | 2010-02-08 → 2010-02-09 A (+1d) | 2010-04-16 → 2010-04-12 A (-4d) | 50d → 45d | 0% → 100% | 0d → none | baseline start none → 2010-02-08; baseline finish none → 2010-04-16 |
| 4 | Hardware Design | 2010-04-19 → 2010-04-13 A (-6d) | 2010-07-27 → 2010-07-16 A (-11d) | 70d → 67d | 0% → 100% | 0d → none | baseline start none → 2010-04-19; baseline finish none → 2010-07-27 |
| 5 | Hardware Documentation | 2010-07-28 → 2010-07-19 A (-9d) | 2010-09-08 → 2010-08-24 A (-15d) | 30d → 27d | 0% → 100% | 0d → none | baseline start none → 2010-07-28; baseline finish none → 2010-09-08 |
| 6 | Prototypes | 2010-11-18 → 2010-11-11 A (-7d) | 2011-03-15 → 2011-03-08 (-7d) |  | 0% → 43% | 50d → 55d | baseline start none → 2010-11-18; baseline finish none → 2011-03-15 |
| 7 | Order Circuit Boards |  | 2011-07-07 → 2011-08-04 (+28d) | 5d → 25d |  | 5d → 0d | baseline start none → 2011-06-30; baseline finish none → 2011-07-07 |
| 8 | Assemble Preproduction Models | 2011-09-19 → 2011-10-17 (+28d) | 2011-10-28 → 2011-11-28 (+31d) |  |  | 5d → 0d | baseline start none → 2011-09-19; baseline finish none → 2011-10-28 |
| 9 | **Opreating System** | 2010-02-08 A |  |  | 0% → 61% | 0d → 75d | baseline start none → 2010-02-08; baseline finish none → 2011-11-04 |
| 10 | Kernel Specifications | 2010-02-08 A | 2010-03-05 → 2010-03-12 A (+7d) | 20d → 25d | 0% → 100% | 30d → none | baseline start none → 2010-02-08; baseline finish none → 2010-03-05 |
| 11 | Kernel Specified | 2010-03-05 → 2010-03-12 (+7d) | 2010-03-05 → 2010-03-12 (+7d) |  |  | 30d → 495d | baseline start none → 2010-03-05; baseline finish none → 2010-03-05 |
| 12 | **Drivers** | 2010-03-08 → 2010-03-15 A (+7d) | 2011-05-24 → 2011-05-17 (-7d) | 310d → 300d | 0% → 60% | 0d → 5d | baseline start none → 2010-03-08; baseline finish none → 2011-05-24 |
| 13 | Disk Drivers | 2010-03-08 → 2010-03-15 A (+7d) | 2010-07-27 → 2010-08-17 A (+21d) | 100d → 110d | 0% → 100% | 30d → none | baseline start none → 2010-03-08; baseline finish none → 2010-07-27 |
| 14 | Serial I/0 drivers | 2010-11-18 → 2010-11-11 A (-7d) | 2011-05-24 → 2011-05-17 (-7d) |  | 0% → 26% | 0d → 5d | baseline start none → 2010-11-18; baseline finish none → 2011-05-24 |
| 15 | Memory Management | 2010-03-08 → 2010-03-15 A (+7d) | 2010-07-13 → 2010-07-30 A (+17d) | 90d → 98d | 0% → 100% | 40d → none | baseline start none → 2010-03-08; baseline finish none → 2010-07-13 |
| 16 | Opreating System Documentation | 2010-03-08 → 2010-03-15 A (+7d) | 2010-04-09 → 2010-04-16 A (+7d) |  | 0% → 100% | 105d → none | baseline start none → 2010-04-26; baseline finish none → 2010-05-28 |
| 17 | Network interface |  |  |  |  | 0d → 15d | baseline start none → 2011-06-30; baseline finish none → 2011-11-04 |
| 18 | **Utilities** | 2010-02-08 → 2010-03-08 A (+28d) |  | 415d → 395d | 0% → 77% | 30d → 105d | baseline start none → 2010-03-08; baseline finish none → 2011-09-23 |
| 19 | Utilities Specification | 2010-02-08 → 2010-03-08 A (+28d) | 2010-02-26 → 2010-03-29 A (+31d) | 15d → 16d | 0% → 100% | 55d → none | baseline start none → 2010-03-08; baseline finish none → 2010-03-26 |
| 20 | Utilities Secified | 2010-02-26 → 2010-03-29 (+31d) | 2010-02-26 → 2010-03-29 (+31d) |  |  | 75d → 484d | baseline start none → 2010-03-26; baseline finish none → 2010-03-26 |
| 21 | Routine Utilities | 2010-03-01 → 2010-04-26 A (+56d) | 2010-05-21 → 2010-07-27 A (+67d) | 60d → 65d | 0% → 100% | 75d → none | resources Development → Xdevelopment; baseline start none → 2010-03-29; baseline finish none → 2010-06-21 |
| 22 | Complex Utitlities | 2010-03-01 → 2010-03-30 A (+29d) | 2010-06-21 → 2010-08-11 A (+51d) | 80d → 95d | 0% → 100% | 55d → none | baseline start none → 2010-03-29; baseline finish none → 2010-07-20 |
| 23 | Utilities Documentation | 2010-03-01 → 2010-05-03 A (+63d) | 2010-03-26 → 2010-06-02 A (+68d) | 20d → 22d | 0% → 100% | 115d → none | baseline start none → 2010-03-29; baseline finish none → 2010-04-23 |
| 24 | Shell |  |  |  |  | 30d → 45d | baseline start none → 2011-06-30; baseline finish none → 2011-09-23 |
| 25 | **System Integration** | 2010-01-04 A | 2012-02-02 → 2012-02-23 (+21d) | 530d → 545d | 0% → 37% |  | baseline start none → 2010-01-04; baseline finish none → 2012-02-02 |
| 26 | Architectural Decisions | 2010-01-04 A | 2010-02-05 A |  | 0% → 100% | 0d → none | baseline start none → 2010-01-04; baseline finish none → 2010-02-05 |
| 27 | Decided on Architectures |  |  |  |  | 55d → 520d | baseline start none → 2010-02-05; baseline finish none → 2010-02-05 |
| 28 | Start of Integration |  |  |  |  | 0d → 370d | baseline start none → 2010-09-09; baseline finish none → 2010-09-09 |
| 29 | Integration First phase | 2010-09-09 → 2010-08-25 A (-15d) | 2010-11-17 → 2010-11-10 A (-7d) | 50d → 55d | 0% → 100% | 0d → none | baseline start none → 2010-09-09; baseline finish none → 2010-11-17 |
| 30 | Start of system testing |  |  |  |  |  | baseline start none → 2011-05-25; baseline finish none → 2011-05-25 |
| 31 | system hard/software test |  |  |  |  |  | baseline start none → 2011-05-25; baseline finish none → 2011-06-29 |
| 32 | Project documentation |  |  |  |  | 40d → 55d | baseline start none → 2011-06-30; baseline finish none → 2011-09-09 |
| 33 | Start of acceptance testing | 2011-11-07 → 2011-11-28 (+21d) | 2011-11-07 → 2011-11-28 (+21d) |  |  |  | baseline start none → 2011-11-07; baseline finish none → 2011-11-07 |
| 34 | Integration acceptance testing | 2011-11-07 → 2011-11-29 (+22d) | 2012-02-02 → 2012-02-23 (+21d) |  |  |  | baseline start none → 2011-11-07; baseline finish none → 2012-02-02 |
| 35 | **Contingency reserves** | 2012-02-02 → 2012-02-23 (+21d) | 2012-02-02 → 2012-02-23 (+21d) |  |  |  | baseline start none → 2012-02-02; baseline finish none → 2012-02-02 |
| 36 | Budget reserves | 2012-02-02 → 2012-02-23 (+21d) | 2012-02-02 → 2012-02-23 (+21d) |  |  |  | baseline start none → 2012-02-02; baseline finish none → 2012-02-02 |
| 37 | Management Reserves | 2012-02-02 → 2012-02-23 (+21d) | 2012-02-02 → 2012-02-23 (+21d) |  |  |  | baseline start none → 2012-02-02; baseline finish none → 2012-02-02 |
